# FsoTV-Project

Schedule from MS Project, 2013-04-02 to 2013-04-10, status date 2013-04-02.
Fsoft

## Calendars

- Standard: Mon-Fri 08:00-12:00, 13:00-17:00; Sat-Sun off.

## Resources

| Resource |
| --- |
| NhungHTH1 |
| CuongVM1 |
| LongPV |
| TungPT6 |
| LongTT4 |
| ChungPV1 |
| All |

## Schedule

| ID | WBS | Task | Duration | Start | Finish | Predecessors | Total slack | Constraint | Resources | Work |
| --- | --- | --- | --- | --- | --- | --- | --- | --- | --- | --- |
| 1 | 1 | **FSoTV Android** | 7d? | 2013-04-02 | 2013-04-10 |  | 0d |  |  | 576h |
| 2 | 1.1 | Kick off meeting | 1d? | 2013-04-02 | 2013-04-02 |  | 0d |  |  |  |
| 3 | 1.2 | **Setup environment** | 1d? | 2013-04-02 | 2013-04-02 |  | 6d |  |  | 16h |
| 4 | 1.2.1 | Register Youtube API key | 1d? | 2013-04-02 | 2013-04-02 |  | 6d |  | NhungHTH1 | 8h |
| 5 | 1.2.2 | Create SVN | 1d? | 2013-04-02 | 2013-04-02 |  | 6d | start no earlier than 2013-04-02 | ChungPV1 | 8h |
| 6 | 1.3 | **Iteration 1** | 3d? | 2013-04-03 | 2013-04-05 | 2 | 0d |  |  | 200h |
| 7 | 1.3.1 | Daily meeting | 1d? | 2013-04-05 | 2013-04-05 |  | 0d | finish no earlier than 2013-04-05 | ChungPV1; CuongVM1; LongTT4; NhungHTH1; TungPT6 | 40h |
| 8 | 1.3.2 | Research about Youtube API | 2d | 2013-04-03 | 2013-04-04 |  | 0d |  | ChungPV1; CuongVM1; LongTT4; NhungHTH1; TungPT6 | 80h |
| 9 | 1.3.3 | Design UI | 1d | 2013-04-05 | 2013-04-05 | 8 | 0d |  | LongTT4 | 8h |
| 10 | 1.3.4 | Design SQLite Database | 1d | 2013-04-05 | 2013-04-05 | 8 | 0d |  | TungPT6 | 8h |
| 11 | 1.3.5 | Code demo get link for video | 1d | 2013-04-05 | 2013-04-05 | 8 | 0d |  | ChungPV1 | 8h |
| 12 | 1.3.6 | Research about JSON | 1d | 2013-04-05 | 2013-04-05 | 8 | 0d |  | CuongVM1 | 8h |
| 13 | 1.3.7 | Code demo Search videos | 1d | 2013-04-05 | 2013-04-05 | 8 | 0d |  | NhungHTH1 | 8h |
| 14 | 1.3.8 | Demo I1 | 1d | 2013-04-05 | 2013-04-05 |  | 0d | start no earlier than 2013-04-05 | ChungPV1; CuongVM1; LongTT4; NhungHTH1; TungPT6 | 40h |
| 15 | 1.4 | **Iteration 2** | 1d? | 2013-04-08 | 2013-04-08 | 6 | 0d |  |  | 120h |
| 16 | 1.4.1 | Daily meeting | 1d? | 2013-04-08 | 2013-04-08 |  | 0d |  | ChungPV1; CuongVM1; LongTT4; NhungHTH1; TungPT6 | 40h |
| 17 | 1.4.2 | Task 1 | 1d? | 2013-04-08 | 2013-04-08 |  | 0d |  | NhungHTH1 | 8h |
| 18 | 1.4.3 | Task 2 | 1d? | 2013-04-08 | 2013-04-08 |  | 0d |  | CuongVM1 | 8h |
| 19 | 1.4.4 | Task 3 | 1d? | 2013-04-08 | 2013-04-08 |  | 0d |  | LongTT4 | 8h |
| 20 | 1.4.5 | Task 4 | 1d? | 2013-04-08 | 2013-04-08 |  | 0d |  | TungPT6 | 8h |
| 21 | 1.4.6 | Task 5 | 1d? | 2013-04-08 | 2013-04-08 |  | 0d |  | ChungPV1 | 8h |
| 22 | 1.4.7 | Demo I2 | 1d? | 2013-04-08 | 2013-04-08 |  | 0d |  | ChungPV1; CuongVM1; LongTT4; NhungHTH1; TungPT6 | 40h |
| 23 | 1.5 | **Iteration 3** | 1d? | 2013-04-09 | 2013-04-09 | 15 | 0d |  |  | 120h |
| 24 | 1.5.1 | Daily meeting | 1d? | 2013-04-09 | 2013-04-09 |  | 0d |  | ChungPV1; CuongVM1; LongTT4; NhungHTH1; TungPT6 | 40h |
| 25 | 1.5.2 | Task 1 | 1d? | 2013-04-09 | 2013-04-09 |  | 0d |  | NhungHTH1 | 8h |
| 26 | 1.5.3 | Task 2 | 1d? | 2013-04-09 | 2013-04-09 |  | 0d |  | CuongVM1 | 8h |
| 27 | 1.5.4 | Task 3 | 1d? | 2013-04-09 | 2013-04-09 |  | 0d |  | LongTT4 | 8h |
| 28 | 1.5.5 | Task 4 | 1d? | 2013-04-09 | 2013-04-09 |  | 0d |  | TungPT6 | 8h |
| 29 | 1.5.6 | Task 5 | 1d? | 2013-04-09 | 2013-04-09 |  | 0d |  | ChungPV1 | 8h |
| 30 | 1.5.7 | Demo I3 | 1d? | 2013-04-09 | 2013-04-09 |  | 0d |  | ChungPV1; CuongVM1; LongTT4; NhungHTH1; TungPT6 | 40h |

| ID | WBS | Task | Duration | Start | Finish | Predecessors | Total slack | Resources | Work |
| --- | --- | --- | --- | --- | --- | --- | --- | --- | --- |
| 31 | 1.6 | **Iteration 4** | 1d? | 2013-04-10 | 2013-04-10 | 23 | 0d |  | 120h |
| 32 | 1.6.1 | Daily meeting | 1d? | 2013-04-10 | 2013-04-10 |  | 0d | ChungPV1; CuongVM1; LongTT4; NhungHTH1; TungPT6 | 40h |
| 33 | 1.6.2 | Task 1 | 1d? | 2013-04-10 | 2013-04-10 |  | 0d | NhungHTH1 | 8h |
| 34 | 1.6.3 | Task 2 | 1d? | 2013-04-10 | 2013-04-10 |  | 0d | CuongVM1 | 8h |
| 35 | 1.6.4 | Task 3 | 1d? | 2013-04-10 | 2013-04-10 |  | 0d | LongTT4 | 8h |
| 36 | 1.6.5 | Task 4 | 1d? | 2013-04-10 | 2013-04-10 |  | 0d | TungPT6 | 8h |
| 37 | 1.6.6 | Task 5 | 1d? | 2013-04-10 | 2013-04-10 |  | 0d | ChungPV1 | 8h |
| 38 | 1.6.7 | Demo I4 | 1d? | 2013-04-10 | 2013-04-10 |  | 0d | ChungPV1; CuongVM1; LongTT4; NhungHTH1; TungPT6 | 40h |
